# Cronograma_Proy

How a schedule from MS Project changed from version to version. A marks actual dates.

## Version 1 (saved 2017-10-16, file CPROY_V1.4_2017.mpp)

Note of the change: PPQA, actas actualizadas

| ID | WBS | Task | Duration | Start | Finish | Predecessors | Complete | Total float | Constraint |
| --- | --- | --- | --- | --- | --- | --- | --- | --- | --- |
| 1 | 1 | **Proyecto Staradmin** | 66d | 2017-08-28 08:00 | 2017-11-13 18:00 |  | 26% |  |  |
| 2 | 1.1 | **Proceso de Gestión** | 54d | 2017-08-28 09:00 A | 2017-10-28 19:00 |  | 70% |  |  |
| 3 | 1.1.1 | **Inicio** | 5d | 2017-08-28 09:00 | 2017-09-01 19:00 |  |  |  |  |
| 4 |  | Revisión de la Metodología del Trabajo | 5d | 2017-08-28 09:00 | 2017-09-01 19:00 |  |  |  |  |
| 5 | 1.1.2 | **Planificación** | 9d | 2017-09-04 08:00 | 2017-09-13 18:00 |  | 100% |  |  |
| 6 | 1.1.2.1 | **Plan del Proyecto** | 8d | 2017-09-04 09:00 A | 2017-09-12 19:00 A |  | 100% |  |  |
| 7 | 1.1.2.1.1 | **Elaboración del Plan del Proyecto** | 6d | 2017-09-04 09:00 A | 2017-09-09 19:00 A |  | 100% |  |  |
| 8 |  | Definir nombre del proyecto | 0.5d | 2017-09-04 09:00 A | 2017-09-04 13:00 A |  | 100% |  | start no earlier than 2017-09-04 08:00 |
| 9 |  | Definir objetivos del proyecto | 0.5d | 2017-09-04 15:00 A | 2017-09-04 19:00 A | 8 | 100% |  |  |
| 10 |  | Elaboración del cronograma detallado | 5d | 2017-09-04 09:00 A | 2017-09-08 19:00 A |  | 100% |  |  |
| 11 |  | Necesidades del Proyecto | 1d | 2017-09-05 09:00 A | 2017-09-05 19:00 A | 9 | 100% |  |  |
| 12 |  | Identificación de Riesgos del Proyecto | 1d | 2017-09-06 09:00 A | 2017-09-06 19:00 A | 11 | 100% |  |  |
| 13 |  | Elaborar Documentos de Riesgo del Proyecto | 1d | 2017-09-07 09:00 A | 2017-09-07 19:00 A | 12 | 100% |  |  |
| 14 |  | Elaborar Documentos del Plan del Proyecto | 1d | 2017-09-08 09:00 A | 2017-09-08 19:00 A | 13 | 100% |  |  |
| 15 |  | Traspaso de Información | 1d | 2017-09-09 09:00 A | 2017-09-09 19:00 A | 14 | 100% |  |  |
| 16 | 1.1.2.1.2 | **Revisión Interna del Plan del Proyecto** | 2d | 2017-09-11 09:00 A | 2017-09-12 19:00 A |  | 100% |  |  |
| 17 |  | Revisión del Plan del Proyecto por el equipo del Proyecto | 1d | 2017-09-11 09:00 A | 2017-09-11 19:00 A |  | 100% |  | start no earlier than 2017-09-11 08:00 |
| 18 |  | Ajustes al Plan del Proyecto | 1d | 2017-09-11 09:00 A | 2017-09-11 19:00 A |  | 100% |  | start no earlier than 2017-09-11 08:00 |
| 19 |  | Elaborar acta de REVISIÓN INTERNA DEL PLAN DEL PROYECTO | 1d | 2017-09-11 09:00 A | 2017-09-11 19:00 A |  | 100% |  | start no earlier than 2017-09-11 08:00 |
| 20 |  | Traspaso de Información | 1d | 2017-09-12 09:00 A | 2017-09-12 19:00 A | 19 | 100% |  |  |
| 21 | 1.1.2.1.3 | **Gestión de la Configuración** | 5d | 2017-09-04 09:00 A | 2017-09-08 19:00 A |  | 100% |  |  |
| 22 |  | Establecer Repositorio de Datos | 2d | 2017-09-04 09:00 A | 2017-09-05 19:00 A |  | 100% |  |  |
| 23 |  | Asignar Gestión de Configuración | 2d | 2017-09-06 09:00 A | 2017-09-07 19:00 A | 22 | 100% |  |  |
| 24 |  | Elaborar Solicitud de Accesos | 1d | 2017-09-08 09:00 A | 2017-09-08 19:00 A | 23 | 100% |  |  |
| 25 | 1.1.3 | **Asignación, Ejecución, Seguimiento y Control** | 39d | 2017-09-13 08:00 | 2017-10-27 18:00 |  | 81% |  |  |
| 26 | 1.1.3.1 | **Desarrollo del Área de Procesos PP-PMC** | 3d | 2017-09-13 09:00 A | 2017-09-15 19:00 A |  | 100% |  |  |
| 27 |  | Elaborar Plantilla de Registro Riesgos | 1d | 2017-09-13 09:00 A | 2017-09-13 19:00 A |  | 100% |  | start no earlier than 2017-09-13 08:00 |
| 28 |  | Elaborar Plantilla de Informe de Avances Semanales | 1d | 2017-09-14 09:00 A | 2017-09-14 19:00 A | 27 | 100% |  |  |
| 29 |  | Elaborar Plantillas de Actas de Reunión Interna Semanal | 1d | 2017-09-13 09:00 A | 2017-09-13 19:00 A |  | 100% |  | start no earlier than 2017-09-13 08:00 |
| 30 |  | Elaborar Formato de Aceptación de Entregables | 1d | 2017-09-14 09:00 A | 2017-09-14 19:00 A | 29 | 100% |  | start no earlier than 2017-09-14 08:00 |
| 31 |  | Elaborar Documento de Proceso de Gestión de Proyectos | 1d | 2017-09-15 09:00 A | 2017-09-15 19:00 A | 30 | 100% |  | start no earlier than 2017-09-15 08:00 |
| 32 |  | Traspaso de Información | 1d | 2017-09-15 09:00 A | 2017-09-15 19:00 A | 27 | 100% |  | start no earlier than 2017-09-15 08:00 |
| 33 | 1.1.3.2 | **Desarrollo del Área de Procesos REQM** | 8d | 2017-09-25 08:00 | 2017-10-03 18:00 A |  | 100% |  |  |
| 34 |  | Elaborar Formato Acta Reunión Cliente | 1d | 2017-09-25 09:00 A | 2017-09-25 19:00 A |  | 100% |  | start no earlier than 2017-09-25 08:00 |
| 35 |  | Elaborar Formato de Matriz de Trazabilidad de Requerimientos | 1d | 2017-09-26 09:00 A | 2017-09-26 19:00 A | 34 | 100% |  |  |
| 36 |  | Elaborar Solicitud de Cambios de Requerimentos | 1d | 2017-09-27 09:00 A | 2017-09-27 19:00 A | 35 | 100% |  |  |
| 37 |  | Elaborar Registro de Cambios de Requerimientos | 1d | 2017-09-28 09:00 A | 2017-09-28 19:00 A | 36 | 100% |  |  |
| 38 |  | Elaborar Lista Maestra de Requerimientos | 1d | 2017-09-25 09:00 A | 2017-09-25 19:00 A |  | 100% |  |  |
| 39 |  | Proceso Gestión de Requerimientos | 1d | 2017-09-25 09:00 A | 2017-09-25 19:00 A |  | 100% |  | start no earlier than 2017-09-25 08:00 |
| 40 |  | Traspaso de Información | 1d | 2017-10-02 18:00 A | 2017-10-03 18:00 A | 39 | 100% |  | finish no earlier than 2017-10-03 18:00 |
| 41 | 1.1.3.3 | **Desarrollo del Proceso MA** | 14d | 2017-10-02 08:00 | 2017-10-17 18:00 |  | 81% |  |  |
| 42 |  | Elaborar Tablero de Control de Métricas del Proyecto | 9d | 2017-10-02 09:00 A | 2017-10-11 19:00 |  | 80% | 0.8d | start no earlier than 2017-10-02 08:00 |
| 43 |  | Elaborar Metrica de Exposicion al Riesgo | 1d | 2017-10-12 09:00 A | 2017-10-12 19:00 | 42 | 80% | 25.88d |  |
| 44 |  | Elaborar Metrica de Volatilidad de Requerimientos | 1d | 2017-10-12 09:00 A | 2017-10-12 19:00 | 42 | 80% | 25.88d |  |
| 45 |  | Elaborar Ficha Métrica de Número de No Conformidades de Calidad-Producto | 4d | 2017-10-12 09:00 A | 2017-10-16 19:00 | 42 | 80% | 22.88d | start no earlier than 2017-10-12 08:00 |
| 46 |  | Traspaso de Información | 0.5d | 2017-10-17 09:00 A | 2017-10-17 13:00 A | 45 | 100% |  | start no earlier than 2017-10-17 08:00 |
| 47 | 1.1.3.4 | **Desarrollo del Proceso PPQA** | 8d | 2017-10-09 08:00 | 2017-10-17 18:00 |  | 85% |  |  |
| 48 |  | Elaborar Herramientas de Gestión de Calidad-Productos | 2d | 2017-10-09 09:00 A | 2017-10-10 19:00 A |  | 100% |  | start no earlier than 2017-10-09 08:00 |
| 49 |  | Elaborar Cheklist de Proyecto | 2d | 2017-10-09 09:00 A | 2017-10-10 19:00 A |  | 100% |  |  |
| 50 |  | Elaborar Proceso de Aseguramiento de la Calidad-Producto | 1d | 2017-10-16 09:00 A | 2017-10-16 19:00 A |  | 100% |  | start no earlier than 2017-10-16 08:00 |
| 51 |  | Elaborar Matriz seguimiento Proyectos Internos | 1d | 2017-10-16 09:00 | 2017-10-16 19:00 |  |  | 22.88d | start no earlier than 2017-10-16 08:00 |
| 52 |  | Traspaso de Información | 0.5d | 2017-10-17 12:00 A | 2017-10-17 18:00 A | 50 | 100% |  | finish no earlier than 2017-10-17 18:00 |
| 53 | 1.1.3.5 | **Desarrollo del Área de Proceso CM** | 4d | 2017-10-23 08:00 | 2017-10-26 18:00 |  |  |  |  |
| 54 |  | Elaborar Indice de Cambios de Intem de Configuración | 1d | 2017-10-23 09:00 | 2017-10-23 19:00 |  |  | 14.38d |  |
| 55 |  | Elaborar Registro de Intems de Configuración | 1d | 2017-10-24 09:00 | 2017-10-24 19:00 | 54 |  | 14.38d |  |
| 56 |  | Elaborar Formato de Solicitud de Acceso | 1d | 2017-10-25 09:00 | 2017-10-25 19:00 | 55 |  | 14.38d |  |
| 57 |  | Traspaso de Información | 0.5d | 2017-10-26 09:00 | 2017-10-26 13:00 | 56 |  | 14.38d |  |
| 58 | 1.1.4 | **Cierre** | 6d | 2017-10-23 08:00 | 2017-10-28 18:00 |  |  |  |  |
| 59 | 1.1.4.1 | **Cierre de Proyecto** | 5d | 2017-10-23 08:00 | 2017-10-27 18:00 |  |  |  |  |
| 60 |  | Revisión de Entregables de Proyecto | 2d | 2017-10-23 09:00 | 2017-10-24 19:00 |  |  | 15.88d |  |
| 61 |  | Traspaso de Información | 1d | 2017-10-23 09:00 | 2017-10-23 19:00 |  |  | 16.88d |  |
| 62 | 1.1.4.2 | **Relatorio del Proyecto** | 5d | 2017-10-23 09:00 | 2017-10-27 19:00 |  |  | 12.88d |  |
| 63 |  | Elaborar Relatorio del Proyecto | 1d | 2017-10-27 09:00 | 2017-10-27 19:00 |  |  | 12.88d | start no earlier than 2017-10-27 08:00 |
| 64 |  | Revisión y Ajustes de Relatorio por el equipo del Proyecto | 2d | 2017-10-23 09:00 | 2017-10-24 19:00 |  |  | 12.88d |  |
| 65 |  | Revisión de Relatorio | 2d | 2017-10-25 09:00 | 2017-10-26 19:00 | 64 |  | 12.88d |  |
| 66 |  | Traspaso de Información | 1d | 2017-10-27 09:00 | 2017-10-27 19:00 | 65 |  | 12.88d |  |
| 67 | 1.2 | **Proceso de Ingeniería** | 55d | 2017-09-04 08:00 | 2017-11-07 18:00 |  |  |  |  |
| 68 | 1.2.1 | **Software Staradmin** | 55d | 2017-09-04 08:00 | 2017-11-07 18:00 |  |  |  |  |
| 69 | 1.2.1.1 | **Requerimientos** | 6d | 2017-09-04 08:00 | 2017-09-09 18:00 |  |  |  |  |
| 70 |  | Desarrollar Plan de Proyecto | 1d | 2017-09-04 09:00 | 2017-09-04 19:00 |  |  | 54.88d | start no earlier than 2017-09-04 08:00 |

| ID | WBS | Task | Duration | Start | Finish | Predecessors | Total float | Constraint |
| --- | --- | --- | --- | --- | --- | --- | --- | --- |
| 71 |  | Realizar Recopilación de Requerimientos | 2d | 2017-09-05 09:00 | 2017-09-06 19:00 | 70 | 54.88d | start no earlier than 2017-09-04 08:00 |
| 72 |  | Elaborar Lista Maestra de Requerimientos | 1d | 2017-09-07 09:00 | 2017-09-07 19:00 | 71 | 54.88d | start no earlier than 2017-09-04 08:00 |
| 73 |  | Traspaso de Información | 1d | 2017-09-08 09:00 | 2017-09-08 19:00 | 72 | 54.88d | start no earlier than 2017-09-04 08:00 |
| 74 | 1.2.1.2 | **Análisis** | 18d | 2017-09-11 08:00 | 2017-09-30 18:00 |  |  |  |
| 75 |  | Elaborar Documentos de Análisis | 5d | 2017-09-11 09:00 | 2017-09-15 19:00 |  | 48.88d | start no earlier than 2017-09-11 08:00 |
| 76 | 1.2.1.2.2 | **Casos de Uso** | 15d | 2017-09-11 08:00 | 2017-09-27 18:00 |  |  |  |
| 77 | 1.2.1.2.2.1 | **Casos de Uso Modulo 1** | 3d | 2017-09-11 08:00 | 2017-09-13 18:00 |  |  |  |
| 78 |  | Entender la Problemática Actual | 1d | 2017-09-11 09:00 | 2017-09-11 19:00 |  | 51.88d |  |
| 79 |  | Elaborar Casos de Uso | 0.5d | 2017-09-12 09:00 | 2017-09-12 13:00 | 78 | 51.88d |  |
| 80 |  | Actualizar Glosario de Términos | 0.5d | 2017-09-12 15:00 | 2017-09-12 19:00 | 79 | 51.88d |  |
| 81 | 1.2.1.2.2.2 | **Caso de Uso Modulo 2** | 3d | 2017-09-13 08:00 | 2017-09-15 18:00 |  |  |  |
| 82 |  | Entender la Problemática Actual | 1d | 2017-09-13 09:00 | 2017-09-13 19:00 |  | 49.88d |  |
| 83 |  | Elaborar Casos de Uso | 0.5d | 2017-09-14 09:00 | 2017-09-14 13:00 | 82 | 49.88d |  |
| 84 |  | Actualizar Glosario de Términos | 0.5d | 2017-09-14 15:00 | 2017-09-14 19:00 | 83 | 49.88d |  |
| 85 | 1.2.1.2.2.3 | **Caso de Uso Modulo 3** | 4d | 2017-09-15 08:00 | 2017-09-19 18:00 |  |  |  |
| 86 |  | Entender la Problemática Actual | 1d | 2017-09-15 09:00 | 2017-09-15 19:00 |  | 48.88d | start no earlier than 2017-09-15 08:00 |
| 87 |  | Elaborar Casos de Uso | 0.5d | 2017-09-19 09:00 | 2017-09-19 13:00 |  | 46.38d | start no earlier than 2017-09-19 08:00 |
| 88 |  | Actualizar Glosario de Términos | 0.5d | 2017-09-19 09:00 | 2017-09-19 13:00 |  | 46.38d | start no earlier than 2017-09-19 08:00 |
| 89 | 1.2.1.2.2.4 | **Caso de Uso Modulo 4** | 2d | 2017-09-20 08:00 | 2017-09-21 18:00 |  |  |  |
| 90 |  | Entender la Problemática Actual | 1d? | 2017-09-20 09:00 | 2017-09-20 19:00 |  | 44.38d | start no earlier than 2017-09-20 08:00 |
| 91 |  | Elaborar Caso de Uso | 0.5d | 2017-09-21 09:00 | 2017-09-21 13:00 | 90 | 44.38d |  |
| 92 |  | Actualizar Glosario de Términos | 0.5d | 2017-09-21 09:00 | 2017-09-21 13:00 |  | 44.38d | start no earlier than 2017-09-21 08:00 |
| 93 | 1.2.1.2.2.5 | **Caso de Uso Modulo 5** | 3d | 2017-09-22 08:00 | 2017-09-25 18:00 |  |  |  |
| 94 |  | Entender la Problemática Actual | 1d | 2017-09-22 09:00 | 2017-09-22 19:00 |  | 42.88d | start no earlier than 2017-09-22 08:00 |
| 95 |  | Elabora Caso de Uso | 0.5d | 2017-09-25 09:00 | 2017-09-25 13:00 |  | 41.38d | start no earlier than 2017-09-25 08:00 |
| 96 |  | Actualizar Glosario de Términos | 0.5d | 2017-09-25 09:00 | 2017-09-25 13:00 |  | 41.38d | start no earlier than 2017-09-25 08:00 |
| 97 |  | Traspaso de Información | 4d | 2017-09-26 09:00 | 2017-09-29 19:00 |  | 36.88d | start no earlier than 2017-09-26 08:00 |
| 98 | 1.2.1.3 | **Diseño** | 10d | 2017-09-19 08:00 | 2017-09-29 18:00 |  |  |  |
| 99 |  | Elaborar Documento de Diseño | 4d | 2017-09-19 09:00 | 2017-09-22 19:00 |  | 42.88d |  |
| 100 |  | Traspaso de Información | 2d | 2017-09-25 09:00 | 2017-09-26 19:00 |  | 39.88d | start no earlier than 2017-09-25 08:00 |
| 101 | 1.2.1.4 | **Contrucción** | 18d | 2017-10-02 08:00 | 2017-10-21 18:00 |  |  |  |
| 102 | 1.2.1.4.1 | **Modulo 1** | 5d | 2017-10-17 08:00 | 2017-10-21 18:00 |  |  |  |
| 103 | 1.2.1.4.1.1 | **Contrucción Modulo Home** | 5d | 2017-10-17 08:00 | 2017-10-21 18:00 |  |  |  |
| 104 |  | Construción de la Vista Home | 4d | 2017-10-17 09:00 | 2017-10-20 19:00 |  | 18.88d | start no earlier than 2017-10-17 08:00 |
| 105 | 1.2.1.4.2 | **Modulo 2** | 5d | 2017-10-02 09:00 | 2017-10-06 19:00 |  |  |  |
| 106 | 1.2.1.4.2.1 | **Contrucción Modulo Venta** | 5d | 2017-10-02 09:00 | 2017-10-06 19:00 |  |  |  |
| 107 |  | Construcción Controlador Venta | 2d | 2017-10-02 09:00 | 2017-10-03 19:00 |  | 31.88d |  |
| 108 |  | Cosntrucción de la vista Venta | 1d | 2017-10-04 09:00 | 2017-10-04 19:00 | 107 | 31.88d |  |
| 109 |  | Cosntrucción del Modelo Venta | 1d | 2017-10-05 09:00 | 2017-10-05 19:00 | 108 | 31.88d |  |
| 110 | 1.2.1.4.3 | **Modulo 3** | 5d | 2017-10-09 08:00 | 2017-10-13 18:00 |  |  |  |
| 111 | 1.2.1.4.3.1 | **Contrucción Modulo Compra** | 5d | 2017-10-09 08:00 | 2017-10-13 18:00 |  |  |  |
| 112 |  | Construcción Controlador Compra | 1d | 2017-10-09 09:00 | 2017-10-09 19:00 |  | 26.88d | start no earlier than 2017-10-09 08:00 |
| 113 |  | Construcción de la Vista Compra | 1d | 2017-10-10 09:00 | 2017-10-10 19:00 | 112 | 26.88d |  |
| 114 |  | Construcción del Modelo Compra | 1d | 2017-10-11 09:00 | 2017-10-11 19:00 | 113 | 26.88d |  |
| 115 | 1.2.1.4.4 | **Modulo 4** | 5d | 2017-10-02 09:00 | 2017-10-06 19:00 |  |  |  |
| 116 | 1.2.1.4.4.1 | **Contrucción Modulo Productos** | 5d | 2017-10-02 09:00 | 2017-10-06 19:00 |  |  |  |
| 117 |  | Construcción Controlador Productos | 2d | 2017-10-02 09:00 | 2017-10-03 19:00 |  | 30.88d |  |
| 118 |  | Construcción de la Vista Productos | 2d | 2017-10-04 09:00 | 2017-10-05 19:00 | 117 | 30.88d |  |
| 119 |  | Consstrucción del Modelo Productos | 1d | 2017-10-06 09:00 | 2017-10-06 19:00 | 118 | 30.88d |  |
| 120 | 1.2.1.4.5 | **Modulo 5** | 5d | 2017-10-09 08:00 | 2017-10-13 18:00 |  |  |  |
| 121 | 1.2.1.4.5.1 | **Construcción Modulo Usuarios** | 5d | 2017-10-09 08:00 | 2017-10-13 18:00 |  |  |  |
| 122 |  | Construcción Controlador Usuarios | 2d | 2017-10-09 09:00 | 2017-10-10 19:00 |  | 25.88d |  |
| 123 |  | Construcción de la Vista Usuarios | 1d | 2017-10-11 09:00 | 2017-10-11 19:00 | 122 | 25.88d |  |
| 124 |  | Construción del Modulo Usuarios | 1d | 2017-10-12 09:00 | 2017-10-12 19:00 | 123 | 25.88d |  |
| 125 | 1.2.1.5 | **Pruebas** | 13d | 2017-10-23 08:00 | 2017-11-07 18:00 |  |  |  |
| 126 | 1.2.1.5.1 | **Pruebas Internas** | 7d | 2017-10-23 08:00 | 2017-10-30 18:00 |  |  |  |
| 127 | 1.2.1.5.1.1 | **Pruebas Modulo 1** | 2d | 2017-10-23 08:00 | 2017-10-24 18:00 |  |  |  |
| 128 |  | Elaborar Pruebas de Modulo | 1d | 2017-10-23 09:00 | 2017-10-23 19:00 |  | 16.38d | start no earlier than 2017-10-23 08:00 |
| 129 |  | Elaborar Informe de Prueba | 0.5d | 2017-10-24 09:00 | 2017-10-24 13:00 | 128 | 16.38d |  |
| 130 |  | Traspaso de Información | 0.5d | 2017-10-24 09:00 | 2017-10-24 13:00 |  | 16.38d | start no earlier than 2017-10-24 08:00 |
| 131 | 1.2.1.5.1.2 | **Pruebas de Modulo 2** | 2d | 2017-10-25 08:00 | 2017-10-26 18:00 |  |  |  |
| 132 |  | Elaborar Pruebas de Modulo | 1d | 2017-10-25 09:00 | 2017-10-25 19:00 |  | 14.38d |  |
| 133 |  | Elaborar Informe de Prueba | 0.5d | 2017-10-26 09:00 | 2017-10-26 13:00 | 132 | 14.38d |  |
| 134 |  | Traspaso de Información | 0.5d | 2017-10-26 09:00 | 2017-10-26 13:00 |  | 14.38d | start no earlier than 2017-10-26 08:00 |
| 135 | 1.2.1.5.1.3 | **Pruebas de Modulo 3** | 2d | 2017-10-27 08:00 | 2017-10-28 18:00 |  |  |  |
| 136 |  | Elaborar Pruebas de Modulo | 1d | 2017-10-27 09:00 | 2017-10-27 19:00 |  | 12.88d |  |
| 137 |  | Elaborar Informe de Prueba | 0.5d | 2017-10-30 09:00 | 2017-10-30 13:00 |  | 11.38d | start no earlier than 2017-10-30 08:00 |
| 138 |  | Traspaso de Información | 0.5d | 2017-10-30 09:00 | 2017-10-30 13:00 |  | 11.38d | start no earlier than 2017-10-30 08:00 |
| 139 | 1.2.1.5.1.4 | **Pruebas de Modulo 4** | 2d | 2017-10-25 08:00 | 2017-10-26 18:00 |  |  |  |
| 140 |  | Elaborar Pruebas de Modulo | 1d | 2017-10-25 09:00 | 2017-10-25 19:00 |  | 14.38d | start no earlier than 2017-10-25 08:00 |

| ID | WBS | Task | Duration | Start | Finish | Predecessors | Total float | Constraint |
| --- | --- | --- | --- | --- | --- | --- | --- | --- |
| 141 |  | Elaborar Informe de Prueba | 0.5d | 2017-10-26 09:00 | 2017-10-26 13:00 | 140 | 14.38d |  |
| 142 |  | Traspaso de Información | 0.5d | 2017-10-26 09:00 | 2017-10-26 13:00 |  | 14.38d | start no earlier than 2017-10-26 08:00 |
| 143 | 1.2.1.5.1.5 | **Pruebas de Modulo 5** | 2d | 2017-10-27 08:00 | 2017-10-28 18:00 |  |  |  |
| 144 |  | Elaborar Pruebas de Modulo | 1d | 2017-10-27 09:00 | 2017-10-27 19:00 |  | 12.88d |  |
| 145 |  | Elaborar Informe de Prueba | 0.5d | 2017-10-30 09:00 | 2017-10-30 13:00 |  | 11.38d | start no earlier than 2017-10-30 08:00 |
| 146 |  | Traspaso de Información | 0.5d | 2017-10-30 09:00 | 2017-10-30 13:00 |  | 11.38d | start no earlier than 2017-10-30 08:00 |
| 147 | 1.2.1.5.2 | **Pruebas Externas** | 3d | 2017-10-31 08:00 | 2017-11-03 18:00 |  |  |  |
| 148 | 1.2.1.5.2.1 | **Pruebas de Modulo 1, 2 y 3** | 2d | 2017-10-31 09:00 | 2017-11-02 19:00 |  |  |  |
| 149 |  | Elaborar Pruebas de Modulos | 1d | 2017-10-31 09:00 | 2017-10-31 19:00 |  | 8.88d | start no earlier than 2017-10-31 08:00 |
| 150 |  | Elaborar Informe de Pruebas | 0.5d | 2017-11-02 09:00 | 2017-11-02 13:00 | 149 | 8.88d |  |
| 151 |  | Traspaso de Información | 0.5d | 2017-11-02 15:00 | 2017-11-02 19:00 | 150 | 8.88d |  |
| 152 | 1.2.1.5.2.2 | **Pruebas de Modulo 4 y 5** | 2d | 2017-10-31 09:00 | 2017-11-02 19:00 |  |  |  |
| 153 |  | Elaborar Pruebas de Modulos | 1d | 2017-10-31 09:00 | 2017-10-31 19:00 |  | 8.88d |  |
| 154 |  | Elaborar Informe de Pruebas | 0.5d | 2017-11-02 09:00 | 2017-11-02 13:00 | 153 | 8.88d |  |
| 155 |  | Traspaso de Información | 0.5d | 2017-11-02 15:00 | 2017-11-02 19:00 | 154 | 8.88d |  |
| 156 | 1.2.1.6 | **Implementación** | 10d | 2017-09-04 09:00 | 2017-09-14 19:00 |  |  |  |
| 157 | 1.2.1.6.1 | **Guia de Usuario** | 1d | 2017-09-04 09:00 | 2017-09-04 19:00 |  | 58.88d |  |
| 158 |  | Elaborar Guia de Instalacion de Sistema | 1d | 2017-09-04 09:00 | 2017-09-04 19:00 |  | 58.88d |  |
| 159 |  | Elaborar Manual de Usuario con todos los módulos actualizados | 1d | 2017-09-04 09:00 | 2017-09-04 19:00 |  | 58.88d |  |
| 160 |  | Traspaso de Información | 1d | 2017-09-04 09:00 | 2017-09-04 19:00 |  | 58.88d |  |
| 161 | 1.3 | **Inducción de Personal** | 3d | 2017-08-28 09:00 | 2017-08-30 19:00 |  | 62.88d |  |
| 162 |  | Establecer Personal para Inducción | 1d | 2017-08-28 09:00 | 2017-08-28 19:00 |  | 64.88d |  |
| 163 |  | Realizar Inducción al Personal | 3d | 2017-08-28 09:00 | 2017-08-30 19:00 |  | 62.88d |  |
| 164 |  | Verificar Proceso de Inducción | 1d | 2017-08-28 09:00 | 2017-08-28 19:00 |  | 64.88d |  |
| 165 |  | Elaborar Certificado de Proceso de Inducción de Personal | 1d | 2017-08-28 09:00 | 2017-08-28 19:00 |  | 64.88d |  |
| 166 |  | Traspaso de Información | 1d | 2017-08-28 09:00 | 2017-08-28 19:00 |  | 64.88d |  |
| 167 |  | Pasar de Área de Desarrollo a Personal Capacitado | 1d | 2017-08-28 09:00 | 2017-08-28 19:00 |  | 64.88d |  |
| 168 | 1.4 | **Proceso de Aseguramiento de la Calidad del Proyecto** | 23d | 2017-08-28 09:00 | 2017-09-22 19:00 |  | 42.88d |  |
| 169 | 1.4.1 | **Primera Revisión** | 5d | 2017-09-18 09:00 | 2017-09-22 19:00 |  | 42.88d |  |
| 170 |  | Correción de puntos faltantes | 4d | 2017-09-19 09:00 | 2017-09-22 19:00 |  | 42.88d | start no earlier than 2017-09-19 08:00 |
| 171 |  | Traspaso de Información | 1d | 2017-09-18 09:00 | 2017-09-18 19:00 |  | 46.88d | start no earlier than 2017-09-18 08:00 |
| 172 | 1.4.2 | **Segunda Revisión** | 13d | 2017-08-28 09:00 | 2017-09-11 19:00 |  | 52.88d |  |
| 173 |  | Correción de puntos faltantes | 13d | 2017-08-28 09:00 | 2017-09-11 19:00 |  | 52.88d |  |
| 174 |  | Traspaso de Información | 1d | 2017-08-28 09:00 | 2017-08-28 19:00 |  | 64.88d |  |
| 175 | 1.4.3 | **Tercera Revisión** | 13d | 2017-08-28 09:00 | 2017-09-11 19:00 |  | 52.88d |  |
| 176 |  | Correción de puntos faltantes | 13d | 2017-08-28 09:00 | 2017-09-11 19:00 |  | 52.88d |  |
| 177 |  | Traspaso de Información | 1d | 2017-08-28 09:00 | 2017-08-28 19:00 |  | 64.88d |  |
| 178 | 1.5 | **Reuniones Internas XX** | 59.88d? | 2017-09-02 09:00 | 2017-11-11 18:00 |  | 0d |  |
| 179 | 1.5.1 | **Reunión Semanal 1** | 1d | 2017-09-09 08:00 | 2017-09-09 18:00 |  |  |  |
| 180 |  | Elaborar Acta de Reunión | 0.5d | 2017-09-02 09:00 | 2017-09-02 13:00 |  | 60.38d | start no earlier than 2017-09-02 08:00 |
| 181 |  | Traspaso de Información | 0.5d | 2017-09-09 09:00 | 2017-09-09 13:00 |  | 54.38d |  |
| 182 | 1.5.2 | **Reunión Semanal 2** | 1d | 2017-09-16 08:00 | 2017-09-16 18:00 |  |  |  |
| 183 |  | Elaborar Acta de Reunión | 0.5d | 2017-09-09 09:00 | 2017-09-09 13:00 |  | 54.38d | start no earlier than 2017-09-09 08:00 |
| 184 |  | Traspaso de Información | 0.5d | 2017-09-09 09:00 | 2017-09-09 13:00 |  | 54.38d | start no earlier than 2017-09-09 08:00 |
| 185 | 1.5.3 | **Reunión Semanal 3** | 1d | 2017-09-23 08:00 | 2017-09-23 18:00 |  |  |  |
| 186 |  | Elaborar Acta de Reunión | 0.5d | 2017-09-16 09:00 | 2017-09-16 13:00 |  | 48.38d | start no earlier than 2017-09-16 08:00 |
| 187 |  | Traspaso de Información | 0.5d | 2017-09-16 09:00 | 2017-09-16 13:00 |  | 48.38d | start no earlier than 2017-09-16 08:00 |
| 188 | 1.5.4 | **Reunión Semanal 4** | 1d | 2017-09-30 08:00 | 2017-09-30 18:00 |  |  |  |
| 189 |  | Elaborar Acta de Reunión | 0.5d | 2017-09-30 09:00 | 2017-09-30 13:00 |  | 36.38d |  |
| 190 |  | Traspaso de Información | 0.5d | 2017-09-30 09:00 | 2017-09-30 13:00 |  | 36.38d |  |
| 191 | 1.5.5 | **Reunión Semanal 5** | 1d | 2017-10-07 08:00 | 2017-10-07 18:00 |  |  |  |
| 192 |  | Elaborar Acta de Reunión | 1d | 2017-10-07 09:00 | 2017-10-07 19:00 |  | 29.88d |  |
| 193 |  | Traspaso de Información | 1d | 2017-10-07 09:00 | 2017-10-07 19:00 |  | 29.88d |  |
| 194 | 1.5.6 | **Reunión Semanal 6** | 1d? | 2017-10-14 08:00 | 2017-10-14 18:00 |  |  |  |
| 195 |  | Elaborar Acta de Reunión | 0.5d | 2017-10-14 09:00 | 2017-10-14 13:00 |  | 24.38d |  |
| 196 |  | Traspaso de Información | 0.5d | 2017-10-14 09:00 | 2017-10-14 13:00 |  | 24.38d |  |
| 197 | 1.5.7 | **Reunión Semanal 7** | 1d | 2017-10-21 08:00 | 2017-10-21 18:00 |  |  |  |
| 198 |  | Elaborar Acta de Reunión | 0.5d | 2017-10-21 09:00 | 2017-10-21 13:00 |  | 18.38d |  |
| 199 |  | Traspaso de Información | 0.5d | 2017-10-21 09:00 | 2017-10-21 13:00 |  | 18.38d |  |
| 200 | 1.5.8 | **Reaunión Semanal 8** | 1d | 2017-10-28 08:00 | 2017-10-28 18:00 |  |  |  |
| 201 |  | Elaborar Acta de Reaunión | 0.5d | 2017-10-28 09:00 | 2017-10-28 13:00 |  | 12.38d |  |
| 202 |  | Traspaso de Información | 0.5d | 2017-10-28 09:00 | 2017-10-28 13:00 |  | 12.38d |  |
| 203 | 1.5.9 | **Reunión Semanal 9** | 1d | 2017-11-04 08:00 | 2017-11-04 18:00 |  |  |  |
| 204 |  | Elaborar Acta de Reunión | 0.5d | 2017-11-04 09:00 | 2017-11-04 13:00 |  | 7.38d |  |
| 205 |  | Traspaso de Información | 0.5d | 2017-11-04 09:00 | 2017-11-04 13:00 |  | 7.38d |  |
| 206 | 1.5.10 | **Reunión Final** | 1d | 2017-11-11 08:00 | 2017-11-11 18:00 |  |  |  |
| 207 |  | Elaborar Acta de Reunión | 0.5d | 2017-11-11 09:00 | 2017-11-11 13:00 |  | 1.38d |  |
| 208 |  | Traspaso de Información | 0.5d | 2017-11-11 09:00 | 2017-11-11 13:00 |  | 1.38d |  |
| 209 | 1.6 | **Reunión Externa XPERTSOLUTIONS-CLIENTE** | 48d | 2017-09-18 08:00 | 2017-11-13 18:00 |  |  |  |
| 210 | 1.6.1 | **Primera Presentación del Proyecto** | 1d | 2017-09-18 09:00 | 2017-09-18 19:00 |  |  |  |

| ID | WBS | Task | Duration | Start | Finish | Total float |
| --- | --- | --- | --- | --- | --- | --- |
| 211 |  | Reunión Externa con LIMBO E.I.R.L | 0.3d | 2017-09-18 09:00 | 2017-09-18 11:24 | 47.58d |
| 212 |  | Acta de reunión de acuerdos tomados | 0.3d | 2017-09-18 09:00 | 2017-09-18 11:24 | 47.58d |
| 213 |  | Traspaso de Información | 0.1d | 2017-09-18 09:00 | 2017-09-18 09:48 | 47.77d |
| 214 | 1.6.2 | **Segúnda Presentación del Proyecto** | 1d | 2017-10-18 08:00 | 2017-10-18 18:00 |  |
| 215 |  | Reunión Externa con LIMBO E.I.R.L | 1d | 2017-10-18 09:00 | 2017-10-18 19:00 | 20.88d |
| 216 |  | Acta de reunión de acuerdos tomados | 0.1d | 2017-10-18 09:00 | 2017-10-18 09:48 | 21.77d |
| 217 |  | Traspaso de Información | 0.3d | 2017-10-18 09:00 | 2017-10-18 11:24 | 21.57d |
| 218 | 1.6.3 | **Tercera Presentación del Proyecto** | 1d | 2017-11-13 08:00 | 2017-11-13 18:00 |  |
| 219 |  | Reunión Externa con LIMBO E.I.R.L | 0.3d | 2017-11-13 09:00 | 2017-11-13 11:24 | 0.57d |
| 220 |  | Acta de reunión de acuerdos tomados | 0.1d | 2017-11-13 09:00 | 2017-11-13 09:48 | 0.78d |
| 221 |  | Traspaso de Información | 0.1d | 2017-11-13 09:00 | 2017-11-13 09:48 | 0.78d |

## Version 2 (saved 2017-10-18, file CPROY_V1.4_2017.mpp)

Note of the change: correcciones finales

Last finish stays 2017-11-13. Complete tasks 33 → 49.

Removed: 51 Elaborar Matriz seguimiento Proyectos Internos

Changed:

| ID | Task | Start | Finish | Duration | Complete | Total float |
| --- | --- | --- | --- | --- | --- | --- |
| 1 | **Proyecto Staradmin** |  |  |  | 26% → 33% |  |
| 2 | **Proceso de Gestión** |  |  |  | 70% → 71% |  |
| 25 | **Asignación, Ejecución, Seguimiento y Control** |  |  |  | 81% → 83% |  |
| 41 | **Desarrollo del Proceso MA** |  |  |  | 81% → 80% |  |
| 46 | Traspaso de Información |  | 2017-10-17 13:00 A → 2017-10-17 13:00 |  | 100% → 90% | none → 22.38d |
| 47 | **Desarrollo del Proceso PPQA** |  | 2017-10-17 18:00 A |  | 85% → 100% |  |
| 167 | **Proceso de Aseguramiento de la Calidad del Proyecto** | 2017-08-28 09:00 → 2017-09-04 08:00 A (+7d) | 2017-09-22 19:00 → 2017-11-10 18:00 (+49d) | 23d → 57.88d | 0% → 15% | 42.88d → 2d |
| 168 | **Primera Revisión** | 2017-09-18 09:00 → 2017-09-04 08:00 (-14d) | 2017-09-22 19:00 → 2017-09-15 18:00 (-7d) | 5d → 11d | 0% → 100% | 42.88d → none |
| 169 | Correción de puntos faltantes | 2017-09-19 09:00 A | 2017-09-22 19:00 A |  | 0% → 100% | 42.88d → none |
| 170 | Traspaso de Información | 2017-09-18 09:00 A | 2017-09-18 19:00 A |  | 0% → 100% | 46.88d → none |
| 171 | **Segunda Revisión** | 2017-08-28 09:00 → 2017-09-25 08:00 (+28d) | 2017-09-11 19:00 → 2017-10-17 18:00 (+36d) | 13d → 20d |  | 52.88d → none |
| 172 | Correción de puntos faltantes | 2017-08-28 09:00 → 2017-09-25 09:00 (+28d) | 2017-09-11 19:00 → 2017-10-09 19:00 (+28d) |  |  | 52.88d → 28.88d |
| 173 | Traspaso de Información | 2017-08-28 09:00 → 2017-09-25 09:00 (+28d) | 2017-08-28 19:00 → 2017-09-25 19:00 (+28d) |  |  | 64.88d → 40.88d |
| 174 | **Tercera Revisión** | 2017-08-28 09:00 → 2017-10-23 08:00 (+56d) | 2017-09-11 19:00 → 2017-11-10 18:00 (+60d) | 13d → 16d |  | 52.88d → none |
| 175 | Correción de puntos faltantes | 2017-08-28 09:00 → 2017-10-23 09:00 (+56d) | 2017-09-11 19:00 → 2017-11-07 19:00 (+57d) |  |  | 52.88d → 4.88d |
| 176 | Traspaso de Información | 2017-08-28 09:00 → 2017-10-23 09:00 (+56d) | 2017-08-28 19:00 → 2017-10-23 19:00 (+56d) |  |  | 64.88d → 16.88d |
| 177 | **Reuniones Internas XX** | 2017-09-02 09:00 A |  |  | 0% → 64% | 0d → 1d |
| 178 | **Reunión Semanal 1** |  | 2017-09-09 18:00 A |  | 0% → 100% |  |
| 179 | Elaborar Acta de Reunión | 2017-09-02 09:00 A | 2017-09-02 13:00 A |  | 0% → 100% | 60.38d → none |
| 180 | Traspaso de Información | 2017-09-09 09:00 A | 2017-09-09 13:00 A |  | 0% → 100% | 54.38d → none |
| 181 | **Reunión Semanal 2** |  | 2017-09-16 18:00 A |  | 0% → 100% |  |
| 182 | Elaborar Acta de Reunión | 2017-09-09 09:00 A | 2017-09-09 13:00 A |  | 0% → 100% | 54.38d → none |
| 183 | Traspaso de Información | 2017-09-09 09:00 A | 2017-09-09 13:00 A |  | 0% → 100% | 54.38d → none |
| 184 | **Reunión Semanal 3** |  | 2017-09-23 18:00 A |  | 0% → 100% |  |
| 185 | Elaborar Acta de Reunión | 2017-09-16 09:00 A | 2017-09-16 13:00 A |  | 0% → 100% | 48.38d → none |
| 186 | Traspaso de Información | 2017-09-16 09:00 A | 2017-09-16 13:00 A |  | 0% → 100% | 48.38d → none |
| 187 | **Reunión Semanal 4** | 2017-09-30 08:00 A | 2017-09-30 18:00 A |  | 0% → 100% |  |
| 188 | Elaborar Acta de Reunión | 2017-09-30 09:00 A | 2017-09-30 13:00 A |  | 0% → 100% | 36.38d → none |
| 189 | Traspaso de Información | 2017-09-30 09:00 A | 2017-09-30 13:00 A |  | 0% → 100% | 36.38d → none |
| 190 | **Reunión Semanal 5** | 2017-10-07 08:00 A |  |  | 0% → 100% |  |
| 191 | Elaborar Acta de Reunión | 2017-10-07 09:00 A | 2017-10-07 19:00 A |  | 0% → 100% | 29.88d → none |
| 192 | Traspaso de Información | 2017-10-07 09:00 A | 2017-10-07 19:00 A |  | 0% → 100% | 29.88d → none |
| 193 | **Reunión Semanal 6** | 2017-10-14 08:00 A | 2017-10-14 18:00 A |  | 0% → 100% |  |
| 194 | Elaborar Acta de Reunión | 2017-10-14 09:00 A | 2017-10-14 13:00 A |  | 0% → 100% | 24.38d → none |
| 195 | Traspaso de Información | 2017-10-14 09:00 A | 2017-10-14 13:00 A |  | 0% → 100% | 24.38d → none |
| 208 | **Reunión Externa XPERTSOLUTIONS-CLIENTE** |  |  |  | 0% → 27% |  |
| 209 | **Primera Presentación del Proyecto** | 2017-09-18 09:00 A |  |  | 0% → 100% |  |
| 210 | Reunión Externa con LIMBO E.I.R.L | 2017-09-18 09:00 A | 2017-09-18 11:24 A |  | 0% → 100% | 47.58d → none |
| 211 | Acta de reunión de acuerdos tomados | 2017-09-18 09:00 A | 2017-09-18 11:24 A |  | 0% → 100% | 47.58d → none |
| 212 | Traspaso de Información | 2017-09-18 09:00 A | 2017-09-18 09:48 A |  | 0% → 100% | 47.77d → none |

## Version 3 (saved 2017-11-06, file CPROY_V1.5_2017.mpp)

Note of the change: avances informes finales

Last finish stays 2017-11-13. Complete tasks 49 → 124.

Added:

| ID | Task | Duration | Start | Finish | Constraint | Resources |
| --- | --- | --- | --- | --- | --- | --- |
| 46 | Ficha de Métricas de Índice de Cambios en Ítems de Configuración | 1d | 2017-10-12 09:00 A | 2017-10-12 19:00 A | start no earlier than 2017-10-12 08:00 | samuel |
| 61 | Elaboración de Acta de Cierre del Proyecto | 2d | 2017-11-06 09:00 A | 2017-11-07 19:00 A |  | david |

Removed: 61 Relatorio del Proyecto; 62 Elaborar Relatorio del Proyecto; 63 Revisión y Ajustes de Relatorio por el equipo del Proyecto; 64 Revisión de Relatorio; 65 Traspaso de Información; 69 Desarrollar Plan de Proyecto; 96 Traspaso de Información; 138 Pruebas de Modulo 4; 139 Elaborar Pruebas de Modulo; 140 Elaborar Informe de Prueba; 141 Traspaso de Información; 142 Pruebas de Modulo 5; 143 Elaborar Pruebas de Modulo; 144 Elaborar Informe de Prueba; 145 Traspaso de Información; 157 Elaborar Guia de Instalacion de Sistema

Changed:

| ID | Task | Start | Finish | Duration | Complete | Total float | Predecessors | Other |
| --- | --- | --- | --- | --- | --- | --- | --- | --- |
| 1 | **Proyecto Staradmin** |  |  |  | 33% → 85% |  |  |  |
| 2 | **Proceso de Gestión** |  |  |  | 71% → 94% |  |  |  |
| 25 | **Asignación, Ejecución, Seguimiento y Control** |  |  |  | 83% → 100% |  |  |  |
| 28 | Elaborar Plantilla de Informe de Avances Mensual |  |  |  |  |  |  | was named Elaborar Plantilla de Informe de Avances Semanales |
| 41 | **Desarrollo del Proceso MA** |  |  |  | 80% → 100% |  |  |  |
| 42 | Elaborar Tablero de Control de Métricas del Proyecto |  | 2017-10-11 19:00 A |  | 80% → 100% | 0.8d → none |  |  |
| 43 | Elaborar Metrica de Exposicion al Riesgo |  | 2017-10-12 19:00 A |  | 80% → 100% | 25.88d → none |  |  |
| 44 | Elaborar Metrica de Volatilidad de Requerimientos |  | 2017-10-12 19:00 A |  | 80% → 100% | 25.88d → none |  |  |
| 45 | Elaborar Ficha Métrica de Número de No Conformidades de Calidad-Producto |  | 2017-10-16 19:00 A |  | 80% → 100% | 0.45d → none |  |  |
| 47 | Traspaso de Información |  | 2017-10-17 13:00 A |  | 90% → 100% | 22.38d → none |  |  |
| 53 | **Desarrollo del Área de Proceso CM** |  | 2017-10-26 18:00 → 2017-10-27 18:00 (+1d) | 4d → 5d | 0% → 100% |  |  |  |
| 54 | Proceso de Gestión de la Configuración | 2017-10-23 09:00 A | 2017-10-23 19:00 → 2017-10-27 19:00 A (+4d) | 1d → 5d | 0% → 100% | 14.38d → none |  | was named Elaborar Indice de Cambios de Intem de Configuración; resources freddy → david |
| 55 | Elaborar Registro de Intems de Configuración | 2017-10-24 09:00 → 2017-10-23 09:00 A (-1d) | 2017-10-24 19:00 → 2017-10-27 19:00 A (+3d) | 1d → 5d | 0% → 100% | 14.38d → none | 54 → none | constraint none → start no earlier than 2017-10-23 08:00; resources freddy → keyla |
| 56 | Elaborar Formato de Solicitud de Acceso | 2017-10-25 09:00 → 2017-10-23 09:00 A (-2d) | 2017-10-25 19:00 → 2017-10-23 19:00 A (-2d) |  | 0% → 100% | 14.38d → none | 55 → none | resources freddy → samuel |
| 57 | Traspaso de Información | 2017-10-26 09:00 → 2017-10-24 09:00 A (-2d) | 2017-10-26 13:00 → 2017-10-24 19:00 A (-2d) | 0.5d → 1d | 0% → 100% | 14.38d → none |  |  |
| 58 | **Cierre** | 2017-10-23 08:00 → 2017-11-06 08:00 (+14d) | 2017-10-28 18:00 → 2017-11-10 18:00 (+13d) | 6d → 5d | 0% → 100% |  |  |  |
| 59 | **Cierre de Proyecto** | 2017-10-23 08:00 → 2017-11-06 08:00 (+14d) | 2017-10-27 18:00 → 2017-11-10 18:00 (+14d) |  | 0% → 100% |  |  |  |
| 60 | Revisión de Entregables de Proyecto | 2017-10-23 09:00 → 2017-11-06 09:00 A (+14d) | 2017-10-24 19:00 → 2017-11-08 19:00 A (+15d) | 2d → 3d | 0% → 100% | 15.88d → none |  | resources none → keyla |
| 62 | Traspaso de Información | 2017-10-23 09:00 → 2017-11-06 09:00 A (+14d) | 2017-10-23 19:00 → 2017-11-06 19:00 A (+14d) |  | 0% → 100% | 16.88d → none |  | resources none → samuel |
| 63 | **Proceso de Ingeniería** | 2017-09-04 08:00 → 2017-09-25 08:00 (+21d) | 2017-11-07 18:00 → 2017-11-10 18:00 (+3d) | 55d → 40d | 0% → 100% |  |  |  |
| 64 | **Software Staradmin** | 2017-09-04 08:00 → 2017-09-25 08:00 (+21d) | 2017-11-07 18:00 → 2017-10-12 18:00 (-26d) | 55d → 16d | 0% → 100% |  |  |  |
| 65 | **Requerimientos** | 2017-09-04 08:00 → 2017-09-25 08:00 (+21d) | 2017-09-09 18:00 → 2017-09-30 18:00 (+21d) |  | 0% → 100% |  |  |  |
| 66 | Realizar Recopilación de Requerimientos | 2017-09-05 09:00 → 2017-09-25 09:00 A (+20d) | 2017-09-06 19:00 → 2017-09-27 19:00 A (+21d) | 2d → 3d | 0% → 100% | 54.88d → none | Desarrollar Plan de Proyecto → none | constraint start no earlier than 2017-09-04 08:00 → start no earlier than 2017-09-25 08:00 |
| 67 | Elaborar Lista Maestra de Requerimientos | 2017-09-07 09:00 → 2017-09-25 09:00 A (+18d) | 2017-09-07 19:00 → 2017-09-26 19:00 A (+19d) | 1d → 2d | 0% → 100% | 54.88d → none | 66 → none | constraint start no earlier than 2017-09-04 08:00 → start no earlier than 2017-09-25 08:00 |
| 68 | Traspaso de Información | 2017-09-08 09:00 → 2017-09-27 09:00 A (+19d) | 2017-09-08 19:00 → 2017-09-27 19:00 A (+19d) |  | 0% → 100% | 54.88d → none |  |  |
| 69 | **Análisis** | 2017-09-11 08:00 → 2017-09-28 08:00 (+17d) | 2017-09-30 18:00 → 2017-10-03 18:00 (+3d) | 18d → 5d | 0% → 100% |  |  |  |
| 70 | Elaborar Documentos de Análisis | 2017-09-11 09:00 → 2017-09-28 09:00 A (+17d) | 2017-09-15 19:00 → 2017-10-03 19:00 A (+18d) |  | 0% → 100% | 48.88d → none |  | constraint start no earlier than 2017-09-11 08:00 → start no earlier than 2017-09-28 08:00; resources keyla → freddy |
| 71 | **Casos de Uso** | 2017-09-11 08:00 → 2017-09-28 08:00 (+17d) | 2017-09-27 18:00 → 2017-10-14 18:00 (+17d) |  | 0% → 100% |  |  |  |
| 72 | **Casos de Uso Modulo 1** | 2017-09-11 08:00 → 2017-09-28 08:00 (+17d) | 2017-09-13 18:00 → 2017-09-29 18:00 (+16d) | 3d → 2d | 0% → 100% |  |  |  |
| 73 | Entender la Problemática Actual | 2017-09-11 09:00 → 2017-09-28 09:00 A (+17d) | 2017-09-11 19:00 → 2017-09-28 19:00 A (+17d) |  | 0% → 100% | 51.88d → none |  | resources david → freddy |
| 74 | Elaborar Casos de Uso | 2017-09-12 09:00 → 2017-09-29 09:00 A (+17d) | 2017-09-12 13:00 → 2017-09-29 13:00 A (+17d) |  | 0% → 100% | 51.88d → none |  | resources david → freddy |
| 75 | Actualizar Glosario de Términos | 2017-09-12 15:00 → 2017-09-29 15:00 A (+17d) | 2017-09-12 19:00 → 2017-09-29 19:00 A (+17d) |  | 0% → 100% | 51.88d → none |  | resources david → freddy |
| 76 | **Caso de Uso Modulo 2** | 2017-09-13 08:00 → 2017-10-02 08:00 (+19d) | 2017-09-15 18:00 → 2017-10-03 18:00 (+18d) | 3d → 2d | 0% → 100% |  |  |  |
| 77 | Entender la Problemática Actual | 2017-09-13 09:00 → 2017-10-02 09:00 A (+19d) | 2017-09-13 19:00 → 2017-10-02 19:00 A (+19d) |  | 0% → 100% | 49.88d → none |  | resources david → freddy |
| 78 | Elaborar Casos de Uso | 2017-09-14 09:00 → 2017-10-03 09:00 A (+19d) | 2017-09-14 13:00 → 2017-10-03 13:00 A (+19d) |  | 0% → 100% | 49.88d → none |  | resources david → freddy |
| 79 | Actualizar Glosario de Términos | 2017-09-14 15:00 → 2017-10-03 15:00 A (+19d) | 2017-09-14 19:00 → 2017-10-03 19:00 A (+19d) |  | 0% → 100% | 49.88d → none |  | resources david → freddy |
| 80 | **Caso de Uso Modulo 3** | 2017-09-15 08:00 → 2017-10-04 08:00 (+19d) | 2017-09-19 18:00 → 2017-10-05 18:00 (+16d) | 4d → 2d | 0% → 100% |  |  |  |
| 81 | Entender la Problemática Actual | 2017-09-15 09:00 → 2017-10-04 09:00 A (+19d) | 2017-09-15 19:00 → 2017-10-04 19:00 A (+19d) |  | 0% → 100% | 48.88d → none |  | constraint start no earlier than 2017-09-15 08:00 → start no earlier than 2017-10-04 08:00 |
| 82 | Elaborar Casos de Uso | 2017-09-19 09:00 → 2017-10-05 09:00 A (+16d) | 2017-09-19 13:00 → 2017-10-05 13:00 A (+16d) |  | 0% → 100% | 46.38d → none | none → 81 | constraint start no earlier than 2017-09-19 08:00 → none |
| 83 | Actualizar Glosario de Términos | 2017-09-19 09:00 → 2017-10-05 09:00 A (+16d) | 2017-09-19 13:00 → 2017-10-05 13:00 A (+16d) |  | 0% → 100% | 46.38d → none |  | constraint start no earlier than 2017-09-19 08:00 → start no earlier than 2017-10-05 08:00 |
| 84 | **Caso de Uso Modulo 4** | 2017-09-20 08:00 → 2017-10-06 08:00 (+16d) | 2017-09-21 18:00 → 2017-10-09 18:00 (+18d) | 2d → 3d | 0% → 100% |  |  |  |
| 85 | Entender la Problemática Actual | 2017-09-20 09:00 → 2017-10-06 09:00 A (+16d) | 2017-09-20 19:00 → 2017-10-06 19:00 A (+16d) | 1d? → 1d | 0% → 100% | 44.38d → none |  | constraint start no earlier than 2017-09-20 08:00 → start no earlier than 2017-10-06 08:00 |
| 86 | Elaborar Caso de Uso | 2017-09-21 09:00 → 2017-10-09 09:00 A (+18d) | 2017-09-21 13:00 → 2017-10-09 13:00 A (+18d) |  | 0% → 100% | 44.38d → none | 85 → none | constraint none → start no earlier than 2017-10-09 08:00 |
| 87 | Actualizar Glosario de Términos | 2017-09-21 09:00 → 2017-10-09 09:00 A (+18d) | 2017-09-21 13:00 → 2017-10-09 13:00 A (+18d) |  | 0% → 100% | 44.38d → none |  | constraint start no earlier than 2017-09-21 08:00 → start no earlier than 2017-10-09 08:00 |
| 88 | **Caso de Uso Modulo 5** | 2017-09-22 08:00 → 2017-10-10 08:00 (+18d) | 2017-09-25 18:00 → 2017-10-11 18:00 (+16d) | 3d → 2d | 0% → 100% |  |  |  |
| 89 | Entender la Problemática Actual | 2017-09-22 09:00 → 2017-10-10 09:00 A (+18d) | 2017-09-22 19:00 → 2017-10-10 19:00 A (+18d) |  | 0% → 100% | 42.88d → none |  | constraint start no earlier than 2017-09-22 08:00 → start no earlier than 2017-10-10 08:00 |
| 90 | Elabora Caso de Uso | 2017-09-25 09:00 → 2017-10-11 09:00 A (+16d) | 2017-09-25 13:00 → 2017-10-11 13:00 A (+16d) |  | 0% → 100% | 41.38d → none | none → 89 | constraint start no earlier than 2017-09-25 08:00 → none |
| 91 | Actualizar Glosario de Términos | 2017-09-25 09:00 → 2017-10-11 09:00 A (+16d) | 2017-09-25 13:00 → 2017-10-11 13:00 A (+16d) |  | 0% → 100% | 41.38d → none |  | constraint start no earlier than 2017-09-25 08:00 → start no earlier than 2017-10-11 09:00 |
| 92 | **Diseño** | 2017-09-19 08:00 → 2017-10-12 08:00 (+23d) | 2017-09-29 18:00 → 2017-10-17 18:00 (+18d) | 10d → 5d | 0% → 100% |  |  |  |
| 93 | Elaborar Documento de Diseño | 2017-09-19 09:00 → 2017-10-12 09:00 A (+23d) | 2017-09-22 19:00 → 2017-10-14 19:00 A (+22d) | 4d → 3d | 0% → 100% | 42.88d → none |  | resources keyla → freddy |
| 94 | Traspaso de Información | 2017-09-25 09:00 → 2017-10-16 09:00 A (+21d) | 2017-09-26 19:00 → 2017-10-17 19:00 A (+21d) |  | 0% → 100% | 39.88d → none | none → 93 | constraint start no earlier than 2017-09-25 08:00 → none |
| 95 | **Contrucción** | 2017-10-02 08:00 → 2017-10-18 08:00 A (+16d) | 2017-10-21 18:00 → 2017-11-03 18:00 (+13d) | 18d → 14d | 0% → 100% |  |  |  |
| 96 | **Modulo 1** | 2017-10-17 08:00 → 2017-10-18 08:00 A (+1d) | 2017-10-21 18:00 → 2017-10-23 18:00 A (+2d) |  | 0% → 100% |  |  |  |
| 97 | **Contrucción Modulo Home** | 2017-10-17 08:00 → 2017-10-18 08:00 A (+1d) | 2017-10-21 18:00 → 2017-10-23 18:00 A (+2d) |  | 0% → 100% |  |  | resources none → keyla |
| 98 | Construción de la Vista Home | 2017-10-17 09:00 → 2017-10-18 09:00 A (+1d) | 2017-10-20 19:00 → 2017-10-23 18:00 A (+3d) | 4d → 4.88d | 0% → 100% | 18.88d → none |  | constraint start no earlier than 2017-10-17 08:00 → finish no earlier than 2017-10-23 18:00 |
| 99 | **Modulo 2** | 2017-10-02 09:00 → 2017-10-23 08:00 A (+21d) | 2017-10-06 19:00 → 2017-10-27 18:00 A (+21d) |  | 0% → 100% |  |  | resources none → keyla |
| 100 | **Contrucción Modulo Venta** | 2017-10-02 09:00 → 2017-10-23 08:00 (+21d) | 2017-10-06 19:00 → 2017-10-27 18:00 (+21d) |  | 0% → 100% |  |  |  |
| 101 | Construcción Controlador Venta | 2017-10-02 09:00 → 2017-10-23 09:00 A (+21d) | 2017-10-03 19:00 → 2017-10-24 19:00 A (+21d) |  | 0% → 100% | 31.88d → none |  |  |
| 102 | Cosntrucción de la vista Venta | 2017-10-04 09:00 → 2017-10-25 09:00 A (+21d) | 2017-10-04 19:00 → 2017-10-25 19:00 A (+21d) |  | 0% → 100% | 31.88d → none |  |  |
| 103 | Cosntrucción del Modelo Venta | 2017-10-05 09:00 → 2017-10-26 09:00 A (+21d) | 2017-10-05 19:00 → 2017-10-26 19:00 A (+21d) |  | 0% → 100% | 31.88d → none |  |  |
| 104 | **Modulo 3** | 2017-10-09 08:00 → 2017-10-18 08:00 A (+9d) | 2017-10-13 18:00 → 2017-10-23 18:00 A (+10d) |  | 0% → 100% |  |  | resources none → david |
| 105 | **Contrucción Modulo Compra** | 2017-10-09 08:00 → 2017-10-18 08:00 (+9d) | 2017-10-13 18:00 → 2017-10-23 18:00 (+10d) |  | 0% → 100% |  |  |  |
| 106 | Construcción Controlador Compra | 2017-10-09 09:00 → 2017-10-18 09:00 A (+9d) | 2017-10-09 19:00 → 2017-10-18 19:00 A (+9d) |  | 0% → 100% | 26.88d → none |  | constraint start no earlier than 2017-10-09 08:00 → start no earlier than 2017-10-18 08:00 |
| 107 | Construcción de la Vista Compra | 2017-10-10 09:00 → 2017-10-19 09:00 A (+9d) | 2017-10-10 19:00 → 2017-10-19 19:00 A (+9d) |  | 0% → 100% | 26.88d → none |  |  |
| 108 | Construcción del Modelo Compra | 2017-10-11 09:00 → 2017-10-20 09:00 A (+9d) | 2017-10-11 19:00 → 2017-10-20 19:00 A (+9d) |  | 0% → 100% | 26.88d → none |  |  |
| 109 | **Modulo 4** | 2017-10-02 09:00 → 2017-10-23 08:00 A (+21d) | 2017-10-06 19:00 → 2017-10-27 18:00 (+21d) |  | 0% → 100% |  |  | resources none → david |
| 110 | **Contrucción Modulo Productos** | 2017-10-02 09:00 → 2017-10-23 08:00 (+21d) | 2017-10-06 19:00 → 2017-10-27 18:00 (+21d) |  | 0% → 100% |  |  |  |
| 111 | Construcción Controlador Productos | 2017-10-02 09:00 → 2017-10-23 09:00 A (+21d) | 2017-10-03 19:00 → 2017-10-24 19:00 A (+21d) |  | 0% → 100% | 30.88d → none |  | constraint none → start no earlier than 2017-10-23 08:00 |
| 112 | Construcción de la Vista Productos | 2017-10-04 09:00 → 2017-10-25 09:00 A (+21d) | 2017-10-05 19:00 → 2017-10-26 19:00 A (+21d) |  | 0% → 100% | 30.88d → none |  |  |
| 113 | Consstrucción del Modelo Productos | 2017-10-06 09:00 → 2017-10-27 09:00 A (+21d) | 2017-10-06 19:00 → 2017-10-27 19:00 A (+21d) |  | 0% → 100% | 30.88d → none |  |  |

| ID | Task | Start | Finish | Duration | Complete | Total float | Predecessors | Other |
| --- | --- | --- | --- | --- | --- | --- | --- | --- |
| 114 | **Modulo 5** | 2017-10-09 08:00 → 2017-10-27 08:00 A (+18d) | 2017-10-13 18:00 → 2017-11-02 18:00 A (+20d) |  | 0% → 100% |  |  | resources none → david |
| 115 | **Construcción Modulo Usuarios** | 2017-10-09 08:00 → 2017-10-27 08:00 (+18d) | 2017-10-13 18:00 → 2017-11-02 18:00 (+20d) |  | 0% → 100% |  |  |  |
| 116 | Construcción Controlador Usuarios | 2017-10-09 09:00 → 2017-10-27 09:00 A (+18d) | 2017-10-10 19:00 → 2017-10-28 19:00 A (+18d) |  | 0% → 100% | 25.88d → none |  | constraint none → start no earlier than 2017-10-27 08:00 |
| 117 | Construcción de la Vista Usuarios | 2017-10-11 09:00 → 2017-10-30 09:00 A (+19d) | 2017-10-11 19:00 → 2017-10-30 19:00 A (+19d) |  | 0% → 100% | 25.88d → none |  |  |
| 118 | Construción del Modulo Usuarios | 2017-10-12 09:00 → 2017-10-31 09:00 A (+19d) | 2017-10-12 19:00 → 2017-10-31 19:00 A (+19d) |  | 0% → 100% | 25.88d → none |  |  |
| 119 | **Pruebas** | 2017-10-23 08:00 → 2017-11-02 08:00 A (+10d) |  | 13d → 5d | 0% → 100% |  |  |  |
| 120 | **Pruebas Internas** | 2017-10-23 08:00 → 2017-11-02 08:00 A (+10d) | 2017-10-30 18:00 → 2017-11-07 18:00 (+8d) | 7d → 5d | 0% → 100% |  |  |  |
| 121 | **Pruebas Modulo 1** | 2017-10-23 08:00 → 2017-11-02 08:00 A (+10d) | 2017-10-24 18:00 → 2017-11-02 18:00 A (+9d) | 2d → 1d | 0% → 100% |  |  | resources none → keyla |
| 122 | Elaborar Pruebas de Modulo | 2017-10-23 09:00 → 2017-11-02 09:00 A (+10d) | 2017-10-23 19:00 → 2017-11-02 11:24 A (+10d) | 1d → 0.3d | 0% → 100% | 16.38d → none |  | constraint start no earlier than 2017-10-23 08:00 → start no earlier than 2017-11-02 08:00 |
| 123 | Elaborar Informe de Prueba | 2017-10-24 09:00 → 2017-11-02 11:24 A (+9d) | 2017-10-24 13:00 → 2017-11-02 15:48 A (+9d) | 0.5d → 0.3d | 0% → 100% | 16.38d → none |  |  |
| 124 | Traspaso de Información | 2017-10-24 09:00 → 2017-11-02 11:24 A (+9d) | 2017-10-24 13:00 → 2017-11-02 15:48 A (+9d) | 0.5d → 0.3d | 0% → 100% | 16.38d → none |  | constraint start no earlier than 2017-10-24 08:00 → start no earlier than 2017-11-02 11:24 |
| 125 | **Pruebas de Modulo 2 y 3** | 2017-10-25 08:00 → 2017-11-03 08:00 A (+9d) | 2017-10-26 18:00 → 2017-11-03 10:24 (+8d) | 2d → 0.3d | 0% → 100% |  |  | was named Pruebas de Modulo 2; resources none → keyla |
| 126 | Elaborar Pruebas de Modulo | 2017-10-25 09:00 → 2017-11-03 09:00 A (+9d) | 2017-10-25 19:00 → 2017-11-03 11:24 A (+9d) | 1d → 0.3d | 0% → 100% | 14.38d → none |  |  |
| 127 | Elaborar Informe de Prueba | 2017-10-26 09:00 → 2017-11-03 11:24 A (+8d) | 2017-10-26 13:00 → 2017-11-03 15:48 A (+8d) | 0.5d → 0.3d | 0% → 100% | 14.38d → none |  |  |
| 128 | Traspaso de Información | 2017-10-26 09:00 → 2017-11-03 11:24 A (+8d) | 2017-10-26 13:00 → 2017-11-03 15:48 A (+8d) | 0.5d → 0.3d | 0% → 100% | 14.38d → none |  | constraint start no earlier than 2017-10-26 08:00 → start no earlier than 2017-11-03 11:24 |
| 129 | **Pruebas de Modulo 4 y 5** | 2017-10-27 08:00 → 2017-11-06 08:00 A (+10d) | 2017-10-28 18:00 → 2017-11-06 10:24 (+9d) | 2d → 0.3d | 0% → 100% |  |  | was named Pruebas de Modulo 3; resources none → keyla |
| 130 | Elaborar Pruebas de Modulo | 2017-10-27 09:00 → 2017-11-06 09:00 A (+10d) | 2017-10-27 19:00 → 2017-11-06 11:24 A (+10d) | 1d → 0.3d | 0% → 100% | 12.88d → none |  |  |
| 131 | Elaborar Informe de Prueba | 2017-10-30 09:00 → 2017-11-06 09:00 A (+7d) | 2017-10-30 13:00 → 2017-11-06 11:24 A (+7d) | 0.5d → 0.3d | 0% → 100% | 11.38d → none |  | constraint start no earlier than 2017-10-30 08:00 → start no earlier than 2017-11-06 09:00 |
| 132 | Traspaso de Información | 2017-10-30 09:00 → 2017-11-06 09:00 A (+7d) | 2017-10-30 13:00 → 2017-11-06 11:24 A (+7d) | 0.5d → 0.3d | 0% → 100% | 11.38d → none |  | constraint start no earlier than 2017-10-30 08:00 → start no earlier than 2017-11-06 09:00 |
| 133 | **Pruebas Externas** | 2017-10-31 08:00 → 2017-11-07 08:00 A (+7d) | 2017-11-03 18:00 → 2017-11-09 18:00 (+6d) |  | 0% → 100% |  |  |  |
| 134 | **Pruebas de Modulo 1, 2 y 3** | 2017-10-31 09:00 → 2017-11-07 08:00 A (+7d) | 2017-11-02 19:00 → 2017-11-08 18:00 A (+6d) |  | 0% → 100% |  |  | resources none → samuel |
| 135 | Elaborar Pruebas de Modulos | 2017-10-31 09:00 → 2017-11-07 09:00 A (+7d) | 2017-10-31 19:00 → 2017-11-07 19:00 A (+7d) |  | 0% → 100% | 8.88d → none |  | constraint start no earlier than 2017-10-31 08:00 → start no earlier than 2017-11-07 08:00 |
| 136 | Elaborar Informe de Pruebas | 2017-11-02 09:00 → 2017-11-07 09:00 A (+5d) | 2017-11-02 13:00 → 2017-11-07 13:00 A (+5d) |  | 0% → 100% | 8.88d → none | 135 → none | constraint none → start no earlier than 2017-11-07 08:00 |
| 137 | Traspaso de Información | 2017-11-02 15:00 → 2017-11-07 09:00 A (+5d) | 2017-11-02 19:00 → 2017-11-07 13:00 A (+5d) |  | 0% → 100% | 8.88d → none |  | constraint none → start no earlier than 2017-11-07 08:00 |
| 138 | **Pruebas de Modulo 4 y 5** | 2017-10-31 09:00 → 2017-11-07 08:00 A (+7d) | 2017-11-02 19:00 → 2017-11-07 18:00 (+5d) | 2d → 1d | 0% → 100% |  |  | resources none → samuel |
| 139 | Elaborar Pruebas de Modulos | 2017-10-31 09:00 → 2017-11-07 09:00 A (+7d) | 2017-10-31 19:00 → 2017-11-07 19:00 A (+7d) |  | 0% → 100% | 8.88d → none |  |  |
| 140 | Elaborar Informe de Pruebas | 2017-11-02 09:00 → 2017-11-07 09:00 A (+5d) | 2017-11-02 13:00 → 2017-11-07 13:00 A (+5d) |  | 0% → 100% | 8.88d → none |  |  |
| 141 | Traspaso de Información | 2017-11-02 15:00 → 2017-11-07 09:00 A (+5d) | 2017-11-02 19:00 → 2017-11-07 13:00 A (+5d) |  | 0% → 100% | 8.88d → none |  |  |
| 142 | **Implementación** | 2017-09-04 09:00 → 2017-11-08 08:00 (+65d) | 2017-09-14 19:00 → 2017-11-10 18:00 (+57d) | 10d → 3d | 0% → 100% |  |  |  |
| 143 | **Guia de Usuario** | 2017-09-04 09:00 → 2017-11-08 08:00 (+65d) | 2017-09-04 19:00 → 2017-11-10 18:00 (+67d) | 1d → 3d | 0% → 100% | 58.88d → none |  |  |
| 144 | Elaborar Manual de Usuario | 2017-09-04 09:00 → 2017-11-08 09:00 A (+65d) | 2017-09-04 19:00 → 2017-11-09 19:00 A (+66d) | 1d → 2d | 0% → 100% | 58.88d → none |  | was named Elaborar Manual de Usuario con todos los módulos actualizados; constraint none → start no earlier than 2017-11-08 08:00; resources none → david |
| 145 | Traspaso de Información | 2017-09-04 09:00 → 2017-11-10 09:00 A (+67d) | 2017-09-04 19:00 → 2017-11-10 19:00 A (+67d) |  | 0% → 100% | 58.88d → none | none → 144 | resources none → david |
| 146 | **Inducción de Personal** | 2017-08-28 09:00 → 2017-11-06 08:00 (+70d) | 2017-08-30 19:00 → 2017-11-08 18:00 (+70d) |  |  | 62.88d → none |  |  |
| 147 | Establecer Personal para Inducción | 2017-08-28 09:00 → 2017-11-06 09:00 (+70d) | 2017-08-28 19:00 → 2017-11-06 19:00 (+70d) |  |  | 64.88d → 5.88d |  | resources none → samuel |
| 148 | Realizar Inducción al Personal | 2017-08-28 09:00 → 2017-11-06 09:00 (+70d) | 2017-08-30 19:00 → 2017-11-08 19:00 (+70d) |  |  | 62.88d → 0.88d |  | resources none → samuel |
| 149 | Verificar Proceso de Inducción | 2017-08-28 09:00 → 2017-11-09 09:00 (+73d) | 2017-08-28 19:00 → 2017-11-09 19:00 (+73d) |  |  | 64.88d → 0.88d | none → 148 | resources none → freddy |
| 150 | Elaborar Certificado de Proceso de Inducción de Personal | 2017-08-28 09:00 → 2017-11-10 09:00 (+74d) | 2017-08-28 19:00 → 2017-11-10 19:00 (+74d) |  |  | 64.88d → 0.88d | none → 149 | resources none → freddy |
| 151 | Traspaso de Información | 2017-08-28 09:00 → 2017-11-11 09:00 (+75d) | 2017-08-28 19:00 → 2017-11-11 19:00 (+75d) |  |  | 64.88d → 0.88d | none → 150 | resources none → freddy |
| 152 | Pasar de Área de Desarrollo a Personal Capacitado | 2017-08-28 09:00 → 2017-11-06 09:00 (+70d) | 2017-08-28 19:00 → 2017-11-06 19:00 (+70d) |  |  | 64.88d → 5.88d |  | resources none → samuel |
| 153 | **Proceso de Aseguramiento de la Calidad del Proyecto** |  |  |  | 15% → 58% |  |  |  |
| 157 | **Segunda Revisión** |  |  |  | 0% → 100% |  |  |  |
| 158 | Correción de puntos faltantes | 2017-09-25 09:00 A | 2017-10-09 19:00 A |  | 0% → 100% | 28.88d → none |  |  |
| 159 | Traspaso de Información | 2017-09-25 09:00 A | 2017-09-25 19:00 A |  | 0% → 100% | 40.88d → none |  |  |
| 163 | **Reuniones Internas XX** |  | 2017-11-11 18:00 → 2017-11-11 19:00 | 59.88d? → 60d | 64% → 91% | 1d → none |  |  |
| 179 | **Reunión Semanal 6** |  |  | 1d? → 1d |  |  |  |  |
| 182 | **Reunión Semanal 7** | 2017-10-21 08:00 A | 2017-10-21 18:00 A |  | 0% → 100% |  |  |  |
| 183 | Elaborar Acta de Reunión | 2017-10-21 09:00 A | 2017-10-21 13:00 A |  | 0% → 100% | 18.38d → none |  |  |
| 184 | Traspaso de Información | 2017-10-21 09:00 A | 2017-10-21 13:00 A |  | 0% → 100% | 18.38d → none |  |  |
| 185 | **Reaunión Semanal 8** | 2017-10-28 08:00 A | 2017-10-28 18:00 A |  | 0% → 100% |  |  |  |
| 186 | Elaborar Acta de Reaunión | 2017-10-28 09:00 A | 2017-10-28 13:00 A |  | 0% → 100% | 12.38d → none |  |  |
| 187 | Traspaso de Información | 2017-10-28 09:00 A | 2017-10-28 13:00 A |  | 0% → 100% | 12.38d → none |  |  |
| 188 | **Reunión Semanal 9** | 2017-11-04 08:00 A | 2017-11-04 18:00 A |  | 0% → 100% |  |  |  |
| 189 | Elaborar Acta de Reunión | 2017-11-04 09:00 A | 2017-11-04 13:00 A |  | 0% → 100% | 7.38d → none |  |  |
| 190 | Traspaso de Información | 2017-11-04 09:00 A | 2017-11-04 13:00 A |  | 0% → 100% | 7.38d → none |  |  |
| 194 | **Reunión Externa XPERTSOLUTIONS-CLIENTE** |  |  |  | 27% → 81% |  |  |  |
| 199 | **Segúnda Presentación del Proyecto** | 2017-10-18 08:00 A |  |  | 0% → 100% |  |  |  |
| 200 | Reunión Externa con LIMBO E.I.R.L | 2017-10-18 09:00 A | 2017-10-18 19:00 A |  | 0% → 100% | 20.88d → none |  |  |
| 201 | Acta de reunión de acuerdos tomados | 2017-10-18 09:00 A | 2017-10-18 09:48 A |  | 0% → 100% | 21.77d → none |  |  |
| 202 | Traspaso de Información | 2017-10-18 09:00 A | 2017-10-18 11:24 A |  | 0% → 100% | 21.57d → none |  |  |

## Version 4 (saved 2017-11-13, file CPROY_V1.6_2017.mpp)

Note of the change: correciones finales

Last finish stays 2017-11-13. Complete tasks 124 → 135.

Changed:

| ID | Task | Start | Finish | Complete | Total float |
| --- | --- | --- | --- | --- | --- |
| 1 | **Proyecto Staradmin** |  |  | 85% → 99% |  |
| 2 | **Proceso de Gestión** |  |  | 94% → 100% |  |
| 3 | **Inicio** | 2017-08-28 09:00 A | 2017-09-01 19:00 A | 0% → 100% |  |
| 4 | Revisión de la Metodología del Trabajo | 2017-08-28 09:00 A | 2017-09-01 19:00 A | 0% → 100% |  |
| 146 | **Inducción de Personal** |  |  | 0% → 100% |  |
| 147 | Establecer Personal para Inducción | 2017-11-06 09:00 A | 2017-11-06 19:00 A | 0% → 100% | 5.88d → none |
| 148 | Realizar Inducción al Personal | 2017-11-06 09:00 A | 2017-11-08 19:00 A | 0% → 100% | 0.88d → none |
| 149 | Verificar Proceso de Inducción | 2017-11-09 09:00 A | 2017-11-09 19:00 A | 0% → 100% | 0.88d → none |
| 150 | Elaborar Certificado de Proceso de Inducción de Personal | 2017-11-10 09:00 A | 2017-11-10 19:00 A | 0% → 100% | 0.88d → none |
| 151 | Traspaso de Información | 2017-11-11 09:00 A | 2017-11-11 19:00 A | 0% → 100% | 0.88d → none |
| 152 | Pasar de Área de Desarrollo a Personal Capacitado | 2017-11-06 09:00 A | 2017-11-06 19:00 A | 0% → 100% | 5.88d → none |
| 153 | **Proceso de Aseguramiento de la Calidad del Proyecto** | 2017-09-04 08:00 A → 2017-09-04 08:00 |  | 58% → 100% | 2d → none |
| 160 | **Tercera Revisión** |  |  | 0% → 100% |  |
| 161 | Correción de puntos faltantes | 2017-10-23 09:00 A | 2017-11-07 19:00 A | 0% → 100% | 4.88d → none |
| 162 | Traspaso de Información | 2017-10-23 09:00 A | 2017-10-23 19:00 A | 0% → 100% | 16.88d → none |
| 163 | **Reuniones Internas XX** |  |  | 91% → 100% |  |
| 191 | **Reunión Final** | 2017-11-11 08:00 A | 2017-11-11 18:00 A | 0% → 100% |  |
| 192 | Elaborar Acta de Reunión | 2017-11-11 09:00 A | 2017-11-11 13:00 A | 0% → 100% | 1.38d → none |
| 193 | Traspaso de Información | 2017-11-11 09:00 A | 2017-11-11 13:00 A | 0% → 100% | 1.38d → none |
